# Recursos

Schedule from MS Project, 2021-11-02 to 2022-01-28, status date 2021-12-15, costs in €.

## Calendars

- Estándar: Mon-Fri 09:00-13:00, 15:00-19:00; Sat-Sun off.

## Resources

| Resource | Group | Rate | Cost per use |
| --- | --- | --- | --- |
| A2 | Analista | 30 |  |
| D1 | Diseñador | 25 |  |
| D2 | Diseñador | 25 |  |
| DS1 | Des. Jefe | 25 |  |
| DS2 | Des. Senior | 20 |  |
| DS3 | Des. Junior | 15 |  |
| DS4 | Des. Junior | 15 |  |
| DS5 | Des. Junior | 15 |  |
| T1 | Tester | 20 |  |
| T2 | Tester | 20 |  |
| A1 | Analista | 30 |  |
| Experto | Experto | 60 |  |
| Equipos Nuevos | Equipos |  |  |
| Dietas |  |  | 130 |
| Servidor AWS |  | 10 |  |

## Schedule

| ID | WBS | Task | Type | Duration | Start | Finish | Predecessors | Baseline start | Baseline finish | Baseline duration | Total slack | Free slack | Resources | Work | Cost | Baseline cost |
| --- | --- | --- | --- | --- | --- | --- | --- | --- | --- | --- | --- | --- | --- | --- | --- | --- |
| 1 | 1 | **Adquisición** |  | 15.68d? | 2021-11-02 | 2021-11-23 |  | 2021-11-02 | 2021-11-23 | 15.68d? | 0d |  |  | 36h | 4,900 | 4,900 |
| 2 | 1.1 | Pedir Presupuestos |  | 0.63d? | 2021-11-02 | 2021-11-02 |  | 2021-11-02 | 2021-11-02 | 0.63d? | 0d |  | DS1; D1; D2 | 12h | 300 | 300 |
| 3 | 1.2 | Analisis Presupuestos |  | 0.5d | 2021-11-11 | 2021-11-12 | 2FS+7d | 2021-11-11 | 2021-11-12 | 0.5d | 0d |  | D1; DS1; D2 | 12h | 300 | 300 |
| 4 | 1.3 | Tramitar Compra | milestone | 0d? | 2021-11-12 | 2021-11-12 | 3 | 2021-11-12 | 2021-11-12 | 0d? | 0d |  | Equipos Nuevos |  | 2,000 | 2,000 |
| 5 | 1.4 | Comenzar Instalacion | milestone | 0d | 2021-11-17 | 2021-11-17 | 4FS+3d | 2021-11-17 | 2021-11-17 | 0d | 0d |  |  |  |  |  |
| 6 | 1.5 | Finalizar Instalación | milestone | 0d | 2021-11-23 | 2021-11-23 | 5FS+4d | 2021-11-23 | 2021-11-23 | 0d | 0d |  |  |  |  |  |
| 7 | 1.6 | Revisar Instalación |  | 0.55d? | 2021-11-23 | 2021-11-23 | 6 | 2021-11-23 | 2021-11-23 | 0.55d? | 0d |  | D1; D2; DS1; Equipos Nuevos [0.1%] | 12h | 2,300 | 2,300 |
| 8 | 2 | **Supervision Experto** |  | 10d? | 2021-11-02 | 2021-11-15 |  | 2021-11-02 | 2021-11-15 | 10d? | 3.68d |  | Experto | 240h | 9,600 | 9,600 |
| 9 | 2.1 | Elaborar ERS1 |  | 2.5d? | 2021-11-02 | 2021-11-04 |  | 2021-11-02 | 2021-11-04 | 2.5d? | 3.68d | 0d | A1; A2 | 40h | 1,200 | 1,200 |
| 10 | 2.2 | Elaborar ERS2 |  | 7.5d? | 2021-11-04 | 2021-11-15 | 9 | 2021-11-04 | 2021-11-15 | 7.5d? | 3.68d | 0d | A1 [50%]; A2 [50%] | 60h | 1,800 | 1,800 |
| 11 | 2.3 | Elaborar Doc. Usuario v1 |  | 7.5d? | 2021-11-04 | 2021-11-15 | 9, 10FF | 2021-11-04 | 2021-11-15 | 7.5d? | 3.68d | 0d | A1 [50%]; A2 [50%] | 60h | 1,800 | 1,800 |
| 12 | 3 | Elaborar Plan Pruebas Aceptación |  | 3d? | 2021-11-16 | 2021-11-18 | 11 | 2021-11-16 | 2021-11-18 | 3d? | 43.64d |  | T1; T2 | 48h | 960 | 960 |
| 13 | 4 | Peer Review de Requisitos |  | 16h | 2021-11-16 | 2021-11-17 | 11 | 2021-11-16 | 2021-11-17 | 16h | 3.68d |  | A1; A2 | 32h | 960 | 960 |
| 14 | 5 | Elaborar Arquitectura (diseño de alto nivel) |  | 5d? | 2021-11-23 | 2021-11-30 | 13, 7 | 2021-11-23 | 2021-11-30 | 5d? | 0d |  | D1; D2 | 80h | 2,000 | 2,000 |
| 15 | 6 | Diseño BBDD (diseño alto nivel) |  | 5d? | 2021-11-30 | 2021-12-07 | 14 | 2021-11-30 | 2021-12-07 | 5d? | 0d |  | D1; D2 | 80h | 2,000 | 2,000 |
| 16 | 7 | Detalle Componentes (diseño bajo nivel) |  | 10d? | 2021-12-07 | 2021-12-21 | 15 | 2021-12-07 | 2021-12-21 | 10d? | 0d |  | D1; D2 | 160h | 4,000 | 4,000 |
| 17 | 8 | Revisión Técnica del Diseño Software (RDS) |  | 16h | 2021-12-21 | 2021-12-23 | 16 | 2021-12-21 | 2021-12-23 | 16h | 0d |  | D1; D2 | 32h | 800 | 800 |
| 18 | 9 | Elaborar Doc. Usuario v2 |  | 2d? | 2021-12-23 | 2021-12-27 | 17 | 2021-12-23 | 2021-12-27 | 2d? | 16.96d | 12.25d | D1; D2 | 32h | 800 | 800 |
| 19 | 10 | **Supervisión Continua Desarrollo** |  | 11.25d? | 2021-12-23 | 2022-01-07 |  | 2021-12-23 | 2022-01-07 | 11.25d? | 0d |  | DS1 [25%] | 382.5h | 6,412.5 | 6,412.5 |
| 20 | 10.1 | Implementar BBDD |  | 2.5d? | 2021-12-23 | 2021-12-28 | 17 | 2021-12-23 | 2021-12-28 | 2.5d? | 0d |  | DS2; DS3 | 40h | 700 | 700 |
| 21 | 10.2 | Implementar Unidades 1 |  | 11.25d? | 2021-12-23 | 2022-01-07 | 17 | 2021-12-23 | 2022-01-07 | 11.25d? | 0d |  | DS4 [50%]; DS5 [50%] | 90h | 1,350 | 1,350 |
| 22 | 10.3 | Implementar Unidades 2 |  | 8.75d? | 2021-12-28 | 2022-01-07 | 20 | 2021-12-28 | 2022-01-07 | 8.75d? | 0d |  | DS2 [50%]; DS3 [50%] | 70h | 1,225 | 1,225 |
| 23 | 10.4 | Documentar Unidades 1 |  | 11.25d? | 2021-12-23 | 2022-01-07 | 21FF, 17 | 2021-12-23 | 2022-01-07 | 11.25d? | 0d |  | DS4 [20%]; DS5 [20%] | 36h | 540 | 540 |
| 24 | 10.5 | Documentar Unidades 2 |  | 8.75d? | 2021-12-28 | 2022-01-07 | 22FF, 20 | 2021-12-28 | 2022-01-07 | 8.75d? | 0d |  | DS2 [20%]; DS3 [20%] | 28h | 490 | 490 |
| 25 | 10.6 | Ejecutar Pruebas de Unidad 1 |  | 11.25d? | 2021-12-23 | 2022-01-07 | 21FF, 23FF, 17 | 2021-12-23 | 2022-01-07 | 11.25d? | 0d |  | DS4 [30%]; DS5 [30%] | 54h | 810 | 810 |
| 26 | 10.7 | Ejecutar Pruebas de Unidad 2 |  | 8.75d? | 2021-12-28 | 2022-01-07 | 22FF, 24FF, 20 | 2021-12-28 | 2022-01-07 | 8.75d? | 0d |  | DS2 [30%]; DS3 [30%] | 42h | 735 | 735 |
| 27 | 11 | Elaborar Plan Pruebas Sistema |  | 3d? | 2021-12-02 | 2021-12-07 | 15FF, 14SS+2% | 2021-12-02 | 2021-12-07 | 3d? | 27.25d |  | T1; T2 | 48h | 960 | 960 |
| 28 | 12 | Elaborar Plan Pruebas Integración |  | 4.5d? | 2021-12-15 | 2021-12-21 | 16FF | 2021-12-15 | 2021-12-21 | 4.5d? | 14.75d | 13.25d | T1; T2 | 72h | 1,440 | 1,440 |
| 29 | 13 | Ejecutar Plan Pruebas Integración |  | 2.5d? | 2022-01-07 | 2022-01-12 | 26, 25, 28 | 2022-01-07 | 2022-01-12 | 2.5d? | 1.5d |  | T1; T2 | 40h | 800 | 800 |
| 30 | 14 | Preparar Paquete de Instalación |  | 24h | 2022-01-07 | 2022-01-12 | 26, 25 | 2022-01-07 | 2022-01-12 | 24h | 0d |  | DS1; DS2 | 48h | 1,080 | 1,080 |
| 31 | 15 | Test de Usabilidad |  | 8h | 2022-01-12 | 2022-01-13 | 30 | 2022-01-12 | 2022-01-13 | 8h | 0d |  | T1; Servidor AWS [1%] | 4.08h | 80.8 | 80.8 |
| 32 | 16 | Ejecutar Plan Pruebas Sistema |  | 3.71d | 2022-01-13 | 2022-01-19 | 27, 29, 31 | 2022-01-13 | 2022-01-19 | 3.71d | 0d |  | Servidor AWS [1%]; T1 | 30h | 597.03 | 597.03 |
| 33 | 17 | Elaborar Doc. Usuario v3 |  | 3d? | 2022-01-12 | 2022-01-17 | 18, 30 | 2022-01-12 | 2022-01-17 | 3d? | 4.71d |  | DS1 | 24h | 600 | 600 |
| 34 | 18 | Ejecutar Plan Pruebas Aceptación |  | 24h | 2022-01-19 | 2022-01-24 | 12, 32 | 2022-01-19 | 2022-01-24 | 24h | 0d |  | T1; T2; Servidor AWS [1%] | 48.24h | 962.4 | 962.4 |
| 35 | 19 | Elaborar Plan Instalación & Formación |  | 0.75d? | 2022-01-24 | 2022-01-25 | 34, 33 | 2022-01-24 | 2022-01-25 | 0.75d? | 0d |  | DS1; A2; D2; T2 | 24h | 600 | 600 |
| 36 | 20 | Formación |  | 16h | 2022-01-25 | 2022-01-27 | 35 | 2022-01-25 | 2022-01-27 | 16h | 1d |  | A2; D2; DS1 [50%]; T2 | 56h | 1,400 | 1,400 |
| 37 | 21 | Instalación en Cliente |  | 3d? | 2022-01-25 | 2022-01-28 | 35 | 2022-01-25 | 2022-01-28 | 3d? | 0d |  | DS3; DS4; DS5; DS1 [50%]; DS2; Dietas [62.5%] | 60h | 1,210 | 1,210 |
