# Recursos

Schedule from MS Project, 2021-11-15 to 2022-03-09, status date 2021-11-02, costs in €.

## Calendars

- Estándar: Mon-Fri 09:00-13:00, 15:00-19:00; Sat-Sun off.

## Resources

| Resource | Group | Rate | Cost per use |
| --- | --- | --- | --- |
| A1 | Analista | 30 |  |
| A2 | Analista | 30 |  |
| D1 | Diseñador | 25 |  |
| D2 | Diseñador | 25 |  |
| DS1 | Des. Jefe | 25 |  |
| DS2 | Des. Senior | 20 |  |
| DS3 | Des. Junior | 15 |  |
| DS4 | Des. Junior | 15 |  |
| DS5 | Des. Junior | 15 |  |
| T1 | Tester | 20 |  |
| T2 | Tester | 20 |  |
| Experto | Experto | 60 |  |
| Equipos Nuevos | Equipos |  |  |
| Dietas |  |  | 130 |
| Servidor AWS |  | 10 |  |

## Schedule

| ID | WBS | Task | Type | Duration | Start | Finish | Predecessors | Baseline start | Baseline finish | Baseline duration | Total slack | Free slack | Resources | Work | Cost | Baseline cost |
| --- | --- | --- | --- | --- | --- | --- | --- | --- | --- | --- | --- | --- | --- | --- | --- | --- |
| 1 | 1 | **Adquisición** |  | 19.72d? | 2021-11-15 | 2021-12-10 |  | 2021-11-02 | 2021-11-23 | 15.68d? | 0d |  |  | 40.25h | 5,006.25 | 4,900 |
| 2 | 1.1 | Pedir Presupuestos |  | 0.63d? | 2021-11-15 | 2021-11-15 |  | 2021-11-02 | 2021-11-02 | 0.63d? | 4.05d |  | DS1; D1; D2 | 15.16h | 379 | 300 |
| 3 | 7 | Elaborar Arquitectura (diseño de alto nivel) |  | 5d? | 2021-11-23 | 2021-11-30 |  |  |  |  | 0d |  |  | 80h | 2,000 |  |
| 4 | 1.3 | Analisis Presupuestos |  | 0.5d | 2021-11-30 | 2021-12-01 | 2FS+7d, 3 | 2021-11-11 | 2021-11-12 | 0.5d | 0d |  | D1; DS1; D2 | 12h | 300 | 300 |
| 5 | 9 | Diseño BBDD (diseño alto nivel) |  | 5d? | 2021-12-01 | 2021-12-08 | 4 |  |  |  | 2d |  |  | 80h | 2,000 |  |
| 6 | 1.5 | Tramitar Compra | milestone | 0d? | 2021-12-01 | 2021-12-01 | 4 | 2021-11-12 | 2021-11-12 | 0d? | 0d |  | Equipos Nuevos |  | 2,000 | 2,000 |
| 7 | 1.6 | Comenzar Instalacion | milestone | 0d | 2021-12-06 | 2021-12-06 | 6FS+3d | 2021-11-17 | 2021-11-17 | 0d | 0d |  |  |  |  |  |
| 8 | 1.7 | Finalizar Instalación | milestone | 0d | 2021-12-10 | 2021-12-10 | 7FS+4d | 2021-11-23 | 2021-11-23 | 0d | 0d |  |  |  |  |  |
| 9 | 1.8 | Revisar Instalación |  | 0.55d? | 2021-12-10 | 2021-12-10 | 8, 5 | 2021-11-23 | 2021-11-23 | 0.55d? | 0d |  | D1; D2; DS1; Equipos Nuevos [0.1%] | 13.09h | 2,327.25 | 2,300 |
| 10 | 11 | Detalle Componentes (diseño bajo nivel) |  | 10d? | 2021-12-10 | 2021-12-24 | 9 |  |  |  | 0d |  |  | 160h | 4,000 |  |
| 11 | 2 | **Supervision Experto** |  | 10d? | 2021-11-18 | 2021-12-01 |  | 2021-11-02 | 2021-11-15 | 10d? | 18.72d |  | Experto | 240h | 9,600 | 9,600 |
| 12 | 5 | Peer Review de Requisitos |  | 16h | 2021-11-16 | 2021-11-17 |  |  |  |  | 3.68d | 0d |  | 32h | 960 |  |
| 13 | 2.2 | Elaborar ERS1 |  | 2.5d? | 2021-11-18 | 2021-11-22 | 12 | 2021-11-02 | 2021-11-04 | 2.5d? | 18.72d | 0d | A1; A2 | 40h | 1,200 | 1,200 |
| 14 | 2.3 | Elaborar ERS2 |  | 7.5d? | 2021-11-22 | 2021-12-01 | 13 | 2021-11-04 | 2021-11-15 | 7.5d? | 18.72d | 0d | A1 [50%]; A2 [50%] | 60h | 1,800 | 1,800 |
| 15 | 2.4 | Elaborar Doc. Usuario v1 |  | 7.5d? | 2021-11-22 | 2021-12-01 | 13, 14FF | 2021-11-04 | 2021-11-15 | 7.5d? | 18.72d | 0d | A1 [50%]; A2 [50%] | 60h | 1,800 | 1,800 |
| 16 | 16 | Elaborar Plan Pruebas Sistema |  | 3d? | 2021-12-03 | 2021-12-08 |  |  |  |  | 41.12d | 0d |  | 48h | 960 |  |
| 17 | 4 | Elaborar Plan Pruebas Aceptación |  | 3d? | 2021-12-08 | 2021-12-13 | 15, 16 | 2021-11-16 | 2021-11-18 | 3d? | 55.55d |  | T1; T2 | 48h | 960 | 960 |
| 18 | 5 | Peer Review de Requisitos |  | 16h | 2021-12-02 | 2021-12-03 | 15 | 2021-11-16 | 2021-11-17 | 16h | 18.72d |  | A1; A2 | 32h | 960 | 960 |
| 19 | 13 | Elaborar Doc. Usuario v2 |  | 2d? | 2021-12-28 | 2021-12-30 |  |  |  |  | 0d |  |  | 32h | 800 |  |
| 20 | 7 | Elaborar Arquitectura (diseño de alto nivel) |  | 5d? | 2021-12-30 | 2022-01-06 | 18, 9, 19 | 2021-11-23 | 2021-11-30 | 5d? | 0d |  | D1; D2 | 80h | 2,000 | 2,000 |
| 21 | 8 | Diseño BBDD (diseño alto nivel) |  | 5d? | 2022-01-06 | 2022-01-13 | 20 | 2021-11-30 | 2021-12-07 | 5d? | 0d |  | D1; D2 | 80h | 2,000 | 2,000 |
| 22 | 9 | Detalle Componentes (diseño bajo nivel) |  | 10d? | 2022-01-13 | 2022-01-27 | 21 | 2021-12-07 | 2021-12-21 | 10d? | 0d |  | D1; D2 | 160h | 4,000 | 4,000 |
| 23 | 27 | Elaborar Plan Instalación & Formación |  | 0.75d? | 2022-02-23 | 2022-02-24 | 42 |  |  |  | 0d |  |  | 24h | 600 |  |
| 24 | 11 | Revisión Técnica del Diseño Software (RDS) |  | 16h | 2022-01-27 | 2022-01-31 | 22 | 2021-12-21 | 2021-12-23 | 16h | 0d |  | D1; D2 | 32h | 800 | 800 |
| 25 | 12 | Elaborar Doc. Usuario v2 |  | 2d? | 2022-01-31 | 2022-02-02 | 24 | 2021-12-23 | 2021-12-27 | 2d? | 12.25d |  | D1; D2 | 32h | 800 | 800 |

| ID | WBS | Task | Duration | Start | Finish | Predecessors | Baseline start | Baseline finish | Baseline duration | Total slack | Free slack | Resources | Work | Cost | Baseline cost |
| --- | --- | --- | --- | --- | --- | --- | --- | --- | --- | --- | --- | --- | --- | --- | --- |
| 26 | 13 | **Supervisión Continua Desarrollo** | 11.25d? | 2022-01-31 | 2022-02-15 |  | 2021-12-23 | 2022-01-07 | 11.25d? | 0d |  | DS1 [25%] | 382.5h | 6,412.5 | 6,412.5 |
| 27 | 13.1 | Implementar BBDD | 2.5d? | 2022-01-31 | 2022-02-03 | 24 | 2021-12-23 | 2021-12-28 | 2.5d? | 0d |  | DS2; DS3 | 40h | 700 | 700 |
| 28 | 13.2 | Implementar Unidades 1 | 11.25d? | 2022-01-31 | 2022-02-15 | 24 | 2021-12-23 | 2022-01-07 | 11.25d? | 0d |  | DS4 [50%]; DS5 [50%] | 90h | 1,350 | 1,350 |
| 29 | 13.3 | Implementar Unidades 2 | 8.75d? | 2022-02-03 | 2022-02-15 | 27 | 2021-12-28 | 2022-01-07 | 8.75d? | 0d |  | DS2 [50%]; DS3 [50%] | 70h | 1,225 | 1,225 |
| 30 | 13.4 | Documentar Unidades 1 | 11.25d? | 2022-01-31 | 2022-02-15 | 28FF, 24 | 2021-12-23 | 2022-01-07 | 11.25d? | 0d |  | DS4 [20%]; DS5 [20%] | 36h | 540 | 540 |
| 31 | 13.5 | Documentar Unidades 2 | 8.75d? | 2022-02-03 | 2022-02-15 | 29FF, 27 | 2021-12-28 | 2022-01-07 | 8.75d? | 0d |  | DS2 [20%]; DS3 [20%] | 28h | 490 | 490 |
| 32 | 13.6 | Ejecutar Pruebas de Unidad 1 | 11.25d? | 2022-01-31 | 2022-02-15 | 28FF, 30FF, 24 | 2021-12-23 | 2022-01-07 | 11.25d? | 0d |  | DS4 [30%]; DS5 [30%] | 54h | 810 | 810 |
| 33 | 13.7 | Ejecutar Pruebas de Unidad 2 | 8.75d? | 2022-02-03 | 2022-02-15 | 29FF, 31FF, 27 | 2021-12-28 | 2022-01-07 | 8.75d? | 0d |  | DS2 [30%]; DS3 [30%] | 42h | 735 | 735 |
| 34 | 14 | Elaborar Plan Pruebas Sistema | 3d? | 2022-01-10 | 2022-01-13 | 21FF, 20SS+2% | 2021-12-02 | 2021-12-07 | 3d? | 11.07d | 0d | T1; T2 | 48h | 960 | 960 |
| 35 | 19 | Ejecutar Plan Pruebas Integración | 2.5d? | 2022-01-13 | 2022-01-18 | 34 |  |  |  | 11.07d |  |  | 40h | 800 |  |
| 36 | 25 | Ejecutar Plan Pruebas Aceptación | 24h | 2022-01-24 | 2022-01-27 |  |  |  |  | 11.07d | 0d |  | 48.24h | 962.4 |  |
| 37 | 17 | Elaborar Plan Pruebas Integración | 4.5d? | 2022-01-27 | 2022-02-03 | 22FF, 36 | 2021-12-15 | 2021-12-21 | 4.5d? | 11.07d | 8.54d | T1; T2 | 72h | 1,440 | 1,440 |
| 38 | 18 | Ejecutar Plan Pruebas Integración | 2.5d? | 2022-02-15 | 2022-02-18 | 33, 32, 37 | 2022-01-07 | 2022-01-12 | 2.5d? | 2.54d | 1.5d | T1; T2 | 40h | 800 | 800 |
| 39 | 19 | Preparar Paquete de Instalación | 24h | 2022-02-15 | 2022-02-18 | 33, 32 | 2022-01-07 | 2022-01-12 | 24h | 0d |  | DS1; DS2 | 48h | 1,080 | 1,080 |
| 40 | 20 | Test de Usabilidad | 8h | 2022-02-18 | 2022-02-21 | 39 | 2022-01-12 | 2022-01-13 | 8h | 1.04d | 0d | T1; Servidor AWS [1%] | 8.08h | 160.8 | 80.8 |
| 41 | 21 | Ejecutar Plan Pruebas Sistema | 3.71d | 2022-02-21 | 2022-02-25 | 34, 38, 40 | 2022-01-13 | 2022-01-19 | 3.71d | 1.04d |  | Servidor AWS [1%]; T1 | 30h | 597.04 | 597.03 |
| 42 | 22 | Elaborar Doc. Usuario v3 | 3d? | 2022-02-18 | 2022-02-23 | 25, 39 | 2022-01-12 | 2022-01-17 | 3d? | 0d |  | DS1 | 24h | 600 | 600 |
| 43 | 28 | Formación | 16h | 2022-02-24 | 2022-02-28 |  |  |  |  | 0d |  |  | 56h | 1,400 |  |
| 44 | 24 | Ejecutar Plan Pruebas Aceptación | 24h | 2022-02-28 | 2022-03-03 | 17, 41, 43 | 2022-01-19 | 2022-01-24 | 24h | 0d |  | T1; T2; Servidor AWS [1%] | 48.24h | 962.4 | 962.4 |
| 45 | 25 | Elaborar Plan Instalación & Formación | 0.75d? | 2022-03-03 | 2022-03-04 | 44, 42 | 2022-01-24 | 2022-01-25 | 0.75d? | 0d |  | DS1; A2; D2; T2 | 24h | 600 | 600 |
| 46 | 26 | Formación | 16h | 2022-03-04 | 2022-03-08 | 45 | 2022-01-25 | 2022-01-27 | 16h | 1d |  | A2; D2; DS1 [50%]; T2 | 56h | 1,400 | 1,400 |
| 47 | 27 | Instalación en Cliente | 3d? | 2022-03-04 | 2022-03-09 | 45 | 2022-01-25 | 2022-01-28 | 3d? | 0d |  | DS3; DS4; DS5; DS1 [50%]; DS2; Dietas [62.5%] | 108h | 1,990 | 1,210 |
