# Recursos

Schedule from MS Project, 2021-11-02 to 2022-01-14, costs in €.

## Calendars

- Estándar: Mon-Fri 09:00-13:00, 15:00-19:00; Sat-Sun off.

## Resources

| Resource | Group | Rate | Cost per use |
| --- | --- | --- | --- |
| A2 | Analista | 30 |  |
| D1 | Diseñador | 25 |  |
| D2 | Diseñador | 25 |  |
| DS1 | Des. Jefe | 25 |  |
| DS2 | Des. Senior | 20 |  |
| DS3 | Des. Junior | 15 |  |
| DS4 | Des. Junior | 15 |  |
| DS5 | Des. Junior | 15 |  |
| T1 | Tester | 20 |  |
| T2 | Tester | 20 |  |
| A1 | Analista | 30 |  |
| Experto | Experto | 60 |  |
| Equipos Nuevos | Equipos |  |  |
| Dietas |  |  | 130 |

## Schedule

| ID | WBS | Task | Type | Duration | Start | Finish | Predecessors | Total slack | Free slack | Resources | Work | Cost |
| --- | --- | --- | --- | --- | --- | --- | --- | --- | --- | --- | --- | --- |
| 1 | 1 | **Adquisición** |  | 15.68d? | 2021-11-02 | 2021-11-23 |  | 0d |  |  | 32h | 4,800 |
| 2 | 1.1 | Pedir Presupuestos |  | 0.63d? | 2021-11-02 | 2021-11-02 |  | 0d |  | DS1; D1; D2 | 12h | 300 |
| 3 | 1.2 | Analisis Presupuestos |  | 0.5d | 2021-11-11 | 2021-11-12 | 2FS+7d | 0d |  | D1; DS1 | 8h | 200 |
| 4 | 1.3 | Tramitar Compra | milestone | 0d? | 2021-11-12 | 2021-11-12 | 3 | 0d |  | Equipos Nuevos |  | 2,000 |
| 5 | 1.4 | Comenzar Instalacion | milestone | 0d | 2021-11-17 | 2021-11-17 | 4FS+3d | 0d |  |  |  |  |
| 6 | 1.5 | Finalizar Instalación | milestone | 0d | 2021-11-23 | 2021-11-23 | 5FS+4d | 0d |  |  |  |  |
| 7 | 1.6 | Revisar Instalación |  | 0.55d? | 2021-11-23 | 2021-11-23 | 6 | 0d |  | D1; D2; DS1; Equipos Nuevos [0.1%] | 12h | 2,300 |
| 8 | 2 | **Supervision Experto** |  | 6.25d? | 2021-11-02 | 2021-11-10 |  | 7.43d |  | Experto | 210h | 7,800 |
| 9 | 2.1 | Elaborar ERS |  | 6.25d? | 2021-11-02 | 2021-11-10 |  | 7.43d | 0d | A1; A2 | 100h | 3,000 |
| 10 | 2.2 | Elaborar Doc. Usuario v1 |  | 3.75d? | 2021-11-04 | 2021-11-10 | 9SS+1.5%, 32FF | 7.43d | 0d | A1; A2 | 60h | 1,800 |
| 11 | 3 | Elaborar Arquitectura (diseño de alto nivel) |  | 5d? | 2021-11-23 | 2021-11-30 | 33, 7 | 0d |  | D1; D2 | 80h | 2,000 |
| 12 | 4 | Detalle Componentes (diseño bajo nivel) |  | 10d? | 2021-11-24 | 2021-12-08 | 34SS+2%, 11SS+2% | 0d |  | D1; D2 | 160h | 4,000 |
| 13 | 5 | Revisión Técnica del Diseño Software (RDS) |  | 16h | 2021-12-08 | 2021-12-10 | 34, 11, 12 | 0d |  | D1; D2 | 32h | 800 |
| 14 | 6 | Elaborar Doc. Usuario v2 |  | 2d? | 2021-12-10 | 2021-12-14 | 13 | 0d |  | D1; D2 | 32h | 800 |
| 15 | 7 | **Supervisión Continua Desarrollo** |  | 6.67d? | 2021-12-14 | 2021-12-23 |  | 0d |  | DS1 [25%] | 413.33h | 7,066.67 |
| 16 | 7.1 | Implementar BBDD |  | 40h | 2021-12-14 | 2021-12-21 | 14 | 17.79d |  | DS2; DS3 | 80h | 1,400 |
| 17 | 7.2 | Implementar Unidades |  | 6.67d? | 2021-12-14 | 2021-12-23 | 14 | 0d |  | DS4; DS5; DS2 | 160h | 2,666.67 |
| 18 | 7.3 | Documentar Unidades |  | 2.67d? | 2021-12-20 | 2021-12-23 | 14, 17FF | 0d |  | DS4; DS5; DS2 | 64h | 1,066.67 |
| 19 | 7.4 | Ejecutar Pruebas de Unidad |  | 4d? | 2021-12-17 | 2021-12-23 | 14, 17FF, 18FF | 0d |  | DS4; DS5; DS2 | 96h | 1,600 |
| 20 | 8 | Elaborar Plan Pruebas Sistema |  | 3d? | 2021-11-25 | 2021-11-30 | 34FF, 11SS+2% | 32.79d |  | T1; T2 | 48h | 960 |
| 21 | 9 | Ejecutar Plan Pruebas Sistema |  | 1.88d? | 2021-12-30 | 2022-01-03 | 25 | 0d |  | T1; T2 | 30h | 600 |
| 22 | 10 | Elaborar Plan Pruebas Integración |  | 4.5d? | 2021-12-02 | 2021-12-08 | 12FF | 26.79d |  | T1; T2 | 72h | 1,440 |
| 23 | 11 | Ejecutar Plan Pruebas Integración |  | 2.5d? | 2021-12-23 | 2021-12-27 | 19 | 0d |  | T1; T2 | 40h | 800 |
| 24 | 12 | Test de Usabilidad |  | 8h | 2021-12-30 | 2021-12-31 | 25 | 0.88d |  | T1; T2 | 16h | 320 |
| 25 | 13 | Preparar Paquete de Instalación |  | 24h | 2021-12-27 | 2021-12-30 | 23 | 0d |  | DS1; DS2 | 48h | 1,080 |
| 26 | 14 | Elaborar Doc. Usuario v3 |  | 3d? | 2022-01-03 | 2022-01-06 | 24, 21 | 0d |  | DS1 | 24h | 600 |
| 27 | 15 | Ejecutar Plan Pruebas Aceptación |  | 24h | 2022-01-06 | 2022-01-11 | 21, 26 | 0d |  | T1; T2 | 48h | 960 |
| 28 | 16 | Elaborar Plan Instalación & Formación |  | 0.75d? | 2022-01-11 | 2022-01-12 | 27 | 0d |  | DS1; A2; D2; T1 | 24h | 600 |
| 29 | 17 | Instalación en Cliente |  | 1.5d? | 2022-01-12 | 2022-01-13 | 28 | 0.5d |  | DS3; DS4; DS5; DS1; DS2; Dietas [62.5%] | 60h | 1,210 |
| 30 | 18 | Formación |  | 16h | 2022-01-12 | 2022-01-14 | 28 | 0d |  | A2; D2; T1; DS1 | 64h | 1,600 |
| 31 | 19 | Elaborar Plan Pruebas Aceptación |  | 3d? | 2021-11-09 | 2021-11-12 | 33FF, 9SS+2% | 45.22d |  | T1; T2 | 48h | 960 |
| 32 | 20 | h1 | milestone | 0d | 2021-11-10 | 2021-11-10 | 9 | 7.43d | 0d |  |  |  |
| 33 | 21 | Peer Review de Requisitos |  | 16h | 2021-11-10 | 2021-11-12 | 10 | 7.43d | 0d | A1; A2 | 32h | 960 |
| 34 | 22 | Diseño BBDD (diseño alto nivel) |  | 5d? | 2021-11-23 | 2021-11-30 | 33, 7 | 0d |  | D1; D2 | 80h | 2,000 |
