# Recursos

Schedule from MS Project, 2021-11-02 to 2022-01-14, costs in €.

## Calendars

- Estándar: Mon-Fri 09:00-13:00, 15:00-19:00; Sat-Sun off.

## Resources

| Resource | Group | Rate | Cost per use |
| --- | --- | --- | --- |
| A2 | Analista | 30 |  |
| D1 | Diseñador | 25 |  |
| D2 | Diseñador | 25 |  |
| DS1 | Des. Jefe | 25 |  |
| DS2 | Des. Senior | 20 |  |
| DS3 | Des. Junior | 15 |  |
| DS4 | Des. Junior | 15 |  |
| DS5 | Des. Junior | 15 |  |
| T1 | Tester | 20 |  |
| T2 | Tester | 20 |  |
| A1 | Analista | 30 |  |
| Experto | Experto | 60 |  |
| Equipos Nuevos | Equipos |  |  |
| Dietas |  |  | 130 |

## Schedule

| ID | WBS | Task | Type | Duration | Start | Finish | Predecessors | Total slack | Free slack | Resources | Work | Cost |
| --- | --- | --- | --- | --- | --- | --- | --- | --- | --- | --- | --- | --- |
| 1 | 1 | **Adquisición** |  | 15.68d? | 2021-11-02 | 2021-11-23 |  | 0d |  |  | 32h | 4,800 |
| 2 | 1.1 | Pedir Presupuestos |  | 0.63d? | 2021-11-02 | 2021-11-02 |  | 0d |  | DS1; D1; D2 | 12h | 300 |
| 3 | 1.2 | Analisis Presupuestos |  | 0.5d | 2021-11-11 | 2021-11-12 | 2FS+7d | 0d |  | D1; DS1 | 8h | 200 |
| 4 | 1.3 | Tramitar Compra | milestone | 0d? | 2021-11-12 | 2021-11-12 | 3 | 0d |  | Equipos Nuevos |  | 2,000 |
| 5 | 1.4 | Comenzar Instalacion | milestone | 0d | 2021-11-17 | 2021-11-17 | 4FS+3d | 0d |  |  |  |  |
| 6 | 1.5 | Finalizar Instalación | milestone | 0d | 2021-11-23 | 2021-11-23 | 5FS+4d | 0d |  |  |  |  |
| 7 | 1.6 | Revisar Instalación |  | 0.55d? | 2021-11-23 | 2021-11-23 | 6 | 0d |  | D1; D2; DS1; Equipos Nuevos [0.1%] | 12h | 2,300 |
| 8 | 2 | **Supervision Experto** |  | 10.62d? | 2021-11-02 | 2021-11-16 |  | 3.05d |  | Experto | 245h | 9,900 |
| 9 | 2.1 | Elaborar ERS1 |  | 1.25d? | 2021-11-02 | 2021-11-03 |  | 3.05d | 0d | A1; A2 | 20h | 600 |
| 10 | 2.2 | Elaborar ERS2 |  | 8.33d? | 2021-11-03 | 2021-11-15 | 9 | 4.09d | 1.04d | A1 [60%]; A2 [60%] | 80h | 2,400 |
| 11 | 2.3 | Elaborar Doc. Usuario v1 |  | 9.38d? | 2021-11-03 | 2021-11-16 | 9, 10FF | 3.05d | 0d | A1 [40%]; A2 [40%] | 60h | 1,800 |
| 12 | 3 | Elaborar Arquitectura (diseño de alto nivel) |  | 5d? | 2021-11-23 | 2021-11-30 | 33, 7 | 0d |  | D1; D2 | 80h | 2,000 |
| 13 | 4 | Detalle Componentes (diseño bajo nivel) |  | 10d? | 2021-11-24 | 2021-12-08 | 34SS+2%, 12SS+2% | 0d |  | D1; D2 | 160h | 4,000 |
| 14 | 5 | Revisión Técnica del Diseño Software (RDS) |  | 16h | 2021-12-08 | 2021-12-10 | 34, 12, 13 | 0d |  | D1; D2 | 32h | 800 |
| 15 | 6 | Elaborar Doc. Usuario v2 |  | 2d? | 2021-12-10 | 2021-12-14 | 14 | 0d |  | D1; D2 | 32h | 800 |
| 16 | 7 | **Supervisión Continua Desarrollo** |  | 6.67d? | 2021-12-14 | 2021-12-23 |  | 0d |  | DS1 [25%] | 373.33h | 6,366.67 |
| 17 | 7.1 | Implementar BBDD |  | 2.5d? | 2021-12-14 | 2021-12-17 | 15 | 20.29d |  | DS2; DS3 | 40h | 700 |
| 18 | 7.2 | Implementar Unidades |  | 6.67d? | 2021-12-14 | 2021-12-23 | 15 | 0d |  | DS4; DS5; DS2 | 160h | 2,666.67 |
| 19 | 7.3 | Documentar Unidades |  | 2.67d? | 2021-12-20 | 2021-12-23 | 15, 18FF | 0d |  | DS4; DS5; DS2 | 64h | 1,066.67 |
| 20 | 7.4 | Ejecutar Pruebas de Unidad |  | 4d? | 2021-12-17 | 2021-12-23 | 15, 18FF, 19FF | 0d |  | DS4; DS5; DS2 | 96h | 1,600 |
| 21 | 8 | Elaborar Plan Pruebas Sistema |  | 3d? | 2021-11-25 | 2021-11-30 | 34FF, 12SS+2% | 32.79d |  | T1; T2 | 48h | 960 |
| 22 | 9 | Ejecutar Plan Pruebas Sistema |  | 1.88d? | 2021-12-30 | 2022-01-03 | 26 | 0d |  | T1; T2 | 30h | 600 |
| 23 | 10 | Elaborar Plan Pruebas Integración |  | 4.5d? | 2021-12-02 | 2021-12-08 | 13FF | 26.79d |  | T1; T2 | 72h | 1,440 |
| 24 | 11 | Ejecutar Plan Pruebas Integración |  | 2.5d? | 2021-12-23 | 2021-12-27 | 20 | 0d |  | T1; T2 | 40h | 800 |
| 25 | 12 | Test de Usabilidad |  | 8h | 2021-12-30 | 2021-12-31 | 26 | 0.88d |  | T1; T2 | 16h | 320 |
| 26 | 13 | Preparar Paquete de Instalación |  | 24h | 2021-12-27 | 2021-12-30 | 24 | 0d |  | DS1; DS2 | 48h | 1,080 |
| 27 | 14 | Elaborar Doc. Usuario v3 |  | 3d? | 2022-01-03 | 2022-01-06 | 25, 22 | 0d |  | DS1 | 24h | 600 |
| 28 | 15 | Ejecutar Plan Pruebas Aceptación |  | 24h | 2022-01-06 | 2022-01-11 | 22, 27 | 0d |  | T1; T2 | 48h | 960 |
| 29 | 16 | Elaborar Plan Instalación & Formación |  | 0.75d? | 2022-01-11 | 2022-01-12 | 28 | 0d |  | DS1; A2; D2; T1 | 24h | 600 |
| 30 | 17 | Instalación en Cliente |  | 1.5d? | 2022-01-12 | 2022-01-13 | 29 | 0.5d |  | DS3; DS4; DS5; DS1; DS2; Dietas [62.5%] | 60h | 1,210 |
| 31 | 18 | Formación |  | 16h | 2022-01-12 | 2022-01-14 | 29 | 0d |  | A2; D2; T1; DS1 | 64h | 1,600 |
| 32 | 19 | Elaborar Plan Pruebas Aceptación |  | 3d? | 2021-11-15 | 2021-11-18 | 33FF, 9 | 40.84d |  | T1; T2 | 48h | 960 |
| 33 | 20 | Peer Review de Requisitos |  | 16h | 2021-11-16 | 2021-11-18 | 11 | 3.05d | 0d | A1; A2 | 32h | 960 |
| 34 | 21 | Diseño BBDD (diseño alto nivel) |  | 5d? | 2021-11-23 | 2021-11-30 | 33, 7 | 0d |  | D1; D2 | 80h | 2,000 |
