# Recursos

Schedule from MS Project, 2021-11-02 to 2022-01-03, costs in €.

## Calendars

- Estándar: Mon-Fri 09:00-13:00, 15:00-19:00; Sat-Sun off.

## Resources

| Resource | Group | Rate |
| --- | --- | --- |
| A2 | Analista | 30 |
| D1 | Diseñador | 25 |
| D2 | Diseñador | 25 |
| DS1 | Des. Jefe | 25 |
| DS2 | Des. Senior | 20 |
| DS3 | Des. Junior | 15 |
| DS4 | Des. Junior | 15 |
| DS5 | Des. Junior | 15 |
| T1 | Tester | 20 |
| T2 | Tester | 20 |
| A1 | Analista | 30 |

## Schedule

| ID | WBS | Task | Duration | Start | Finish | Predecessors | Total slack | Free slack | Constraint | Resources | Work | Cost |
| --- | --- | --- | --- | --- | --- | --- | --- | --- | --- | --- | --- | --- |
| 1 | 1 | Elaborar ERS | 6.25d? | 2021-11-02 | 2021-11-10 |  | 0d |  |  | A1; A2 | 100h | 3,000 |
| 2 | 2 | Elaborar Doc. Usuario v1 | 3.75d? | 2021-11-04 | 2021-11-10 | 1FF | 0d |  |  | A1; A2 | 60h | 1,800 |
| 3 | 3 | Peer Review de Requisitos | 16h | 2021-11-10 | 2021-11-12 | 1, 2 | 0d |  |  | A1; A2 | 32h | 960 |
| 4 | 4 | Elaborar Arquitectura (diseño de alto nivel) | 5d? | 2021-11-12 | 2021-11-19 | 3 | 0d |  |  | D1; D2 | 80h | 2,000 |
| 5 | 5 | Diseño BBDD (diseño alto nivel) | 5d? | 2021-11-12 | 2021-11-19 | 3 | 0d |  |  | D1; D2 | 80h | 2,000 |
| 6 | 6 | Detalle Componentes (diseño bajo nivel) | 10d? | 2021-11-16 | 2021-11-30 | 5SS+4%, 4SS+4% | 0d |  |  | D1; D2 | 160h | 4,000 |
| 7 | 7 | Revisión Técnica del Diseño Software (RDS) | 16h | 2021-11-30 | 2021-12-02 | 5, 4, 6 | 0d |  |  | D1; D2 | 32h | 800 |
| 8 | 8 | Elaborar Doc. Usuario v2 | 2d? | 2021-12-02 | 2021-12-06 | 7 | 0d |  |  | D1; D2 | 32h | 800 |
| 9 | 9 | **Supervisión periódica Desarrollo** | 25.5d | 2021-11-05 | 2021-12-10 |  | 15.54d |  |  |  |  |  |
| 10 | 9.1 | Supervisión periódica Desarrollo 1 | 4h | 2021-11-05 | 2021-11-05 |  | 40.54d |  | start no earlier than 2021-11-05 |  |  |  |
| 11 | 9.2 | Supervisión periódica Desarrollo 2 | 4h | 2021-11-12 | 2021-11-12 |  | 35.54d |  | start no earlier than 2021-11-12 |  |  |  |
| 12 | 9.3 | Supervisión periódica Desarrollo 3 | 4h | 2021-11-19 | 2021-11-19 |  | 30.54d |  | start no earlier than 2021-11-19 |  |  |  |
| 13 | 9.4 | Supervisión periódica Desarrollo 4 | 4h | 2021-11-26 | 2021-11-26 |  | 25.54d |  | start no earlier than 2021-11-26 |  |  |  |
| 14 | 9.5 | Supervisión periódica Desarrollo 5 | 4h | 2021-12-03 | 2021-12-03 |  | 20.54d |  | start no earlier than 2021-12-03 |  |  |  |
| 15 | 9.6 | Supervisión periódica Desarrollo 6 | 4h | 2021-12-10 | 2021-12-10 |  | 15.54d |  | start no earlier than 2021-12-10 |  |  |  |
| 16 | 10 | Implementar BBDD | 40h | 2021-12-06 | 2021-12-13 | 8 | 14.79d |  |  | DS2; DS3 | 80h | 1,400 |
| 17 | 11 | Implementar Unidades | 6.67d? | 2021-12-06 | 2021-12-14 | 8 | 0d |  |  | DS4; DS5; DS2 | 160h | 2,666.67 |
| 18 | 12 | Documentar Unidades | 2.67d? | 2021-12-10 | 2021-12-14 | 8, 17FF | 0d |  |  | DS4; DS5; DS2 | 64h | 1,066.67 |
| 19 | 13 | Ejecutar Pruebas de Unidad | 4d? | 2021-12-08 | 2021-12-14 | 8, 17FF, 18FF | 0d |  |  | DS4; DS5; DS2 | 96h | 1,600 |
| 20 | 14 | Elaborar Plan Pruebas Aceptación | 3d? | 2021-11-09 | 2021-11-12 | 3FF, 1SS+2% | 35.79d |  |  | T1; T2 | 48h | 960 |
| 21 | 15 | Ejecutar Plan Pruebas Aceptación | 24h | 2021-12-24 | 2021-12-29 | 23 | 0d |  |  | T1; T2 | 48h | 960 |
| 22 | 16 | Elaborar Plan Pruebas Sistema | 3d? | 2021-11-16 | 2021-11-19 | 5FF, 4SS+2% | 30.79d |  |  | T1; T2 | 48h | 960 |
| 23 | 17 | Ejecutar Plan Pruebas Sistema | 1.88d? | 2021-12-22 | 2021-12-24 | 27 | 0d |  |  | T1; T2 | 30h | 600 |
| 24 | 18 | Elaborar Plan Pruebas Integración | 4.5d? | 2021-11-23 | 2021-11-30 | 6FF | 23.79d |  |  | T1; T2 | 72h | 1,440 |
| 25 | 19 | Ejecutar Plan Pruebas Integración | 2.5d? | 2021-12-14 | 2021-12-17 | 19 | 0d |  |  | T1; T2 | 40h | 800 |
| 26 | 20 | Test de Usabilidad | 8h | 2021-12-22 | 2021-12-23 | 27 | 3.62d | 0.88d |  | T1; T2 | 16h | 320 |
| 27 | 21 | Preparar Paquete de Instalación | 24h | 2021-12-17 | 2021-12-22 | 25 | 0d |  |  | DS1; DS2 | 48h | 1,080 |
| 28 | 22 | Elaborar Doc. Usuario v3 | 3d? | 2021-12-24 | 2021-12-29 | 26, 23 | 2.75d |  |  | DS1 | 24h | 600 |
| 29 | 23 | Elaborar Plan Instalación & Formación | 0.75d? | 2021-12-29 | 2021-12-30 | 21 | 0d |  |  | DS1; A2; D2; T1 | 24h | 600 |
| 30 | 24 | Instalación en Cliente | 1.5d? | 2021-12-30 | 2021-12-31 | 29 | 0.5d |  |  | DS3; DS4; DS5; DS1; DS2 | 60h | 1,080 |
| 31 | 25 | Formación | 16h | 2021-12-30 | 2022-01-03 | 29 | 0d |  |  | A2; D2; T1; DS1 | 64h | 1,600 |
