# Recursos

Schedule from MS Project, 2021-11-02 to 2021-12-29, costs in €.

## Calendars

- Estándar: Mon-Fri 09:00-13:00, 15:00-19:00; Sat-Sun off.

## Resources

| Resource | Group | Rate |
| --- | --- | --- |
| A2 | Analista | 30 |
| D1 | Diseñador | 25 |
| D2 | Diseñador | 25 |
| DS1 | Des. Jefe | 25 |
| DS2 | Des. Senior | 20 |
| DS3 | Des. Junior | 15 |
| DS4 | Des. Junior | 15 |
| DS5 | Des. Junior | 15 |
| T1 | Tester | 20 |
| T2 | Tester | 20 |
| A1 | Analista | 30 |

## Schedule

| ID | Task | Duration | Start | Finish | Predecessors | Total slack | Free slack | Resources | Work | Cost |
| --- | --- | --- | --- | --- | --- | --- | --- | --- | --- | --- |
| 1 | Elaborar ERS | 6.25d? | 2021-11-02 | 2021-11-10 |  | 0d |  | A1; A2 | 100h | 3,000 |
| 2 | Elaborar Doc. Usuario v1 | 3.75d? | 2021-11-04 | 2021-11-10 | 1FF | 0d |  | A1; A2 | 60h | 1,800 |
| 3 | Peer Review de Requisitos | 16h | 2021-11-10 | 2021-11-12 | 2 | 0d |  | A1; A2 | 32h | 960 |
| 4 | Elaborar Arquitectura (diseño de alto nivel) | 5d? | 2021-11-12 | 2021-11-19 | 3 | 0d |  | D1; D2 | 80h | 2,000 |
| 5 | Diseño BBDD (diseño alto nivel) | 5d? | 2021-11-12 | 2021-11-19 | 3 | 0d |  | D1; D2 | 80h | 2,000 |
| 6 | Detalle Componentes (diseño bajo nivel) | 10d? | 2021-11-16 | 2021-11-30 | 5SS+4%, 4SS+4% | 0d |  | D1; D2 | 160h | 4,000 |
| 7 | Revisión Técnica del Diseño Software (RDS) | 16h | 2021-11-30 | 2021-12-02 | 5, 4, 6 | 0d |  | D1; D2 | 32h | 800 |
| 8 | Elaborar Doc. Usuario v2 | 2d? | 2021-12-02 | 2021-12-06 | 7 | 0d |  | D1; D2 | 32h | 800 |
| 9 | Implementar BBDD | 40h | 2021-12-06 | 2021-12-13 | 8 | 12.12d | 0.83d | DS2; DS3 | 80h | 1,400 |
| 10 | Implementar Unidades | 6.67d? | 2021-12-06 | 2021-12-14 | 8 | 10.46d | 0d | DS4; DS5; DS2 | 160h | 2,666.67 |
| 11 | Supervision Mitad Desarrollo | 1d? | 2021-12-09 | 2021-12-10 | 10SS+5%, 9SS+5%, 12SS+5%, 13SS+5% | 12.79d |  | DS1 | 8h | 200 |
| 12 | Documentar Unidades | 2.67d? | 2021-12-06 | 2021-12-08 | 8 | 1.33d |  | DS4; DS5; DS2 | 64h | 1,066.67 |
| 13 | Ejecutar Pruebas de Unidad | 4d? | 2021-12-06 | 2021-12-10 | 8, 12FF | 0d |  | DS4; DS5; DS2 | 96h | 1,600 |
| 14 | Elaborar Plan Pruebas Aceptación | 3d? | 2021-11-09 | 2021-11-12 | 3FF, 1SS+2% | 33.12d |  | T1; T2 | 48h | 960 |
| 15 | Ejecutar Plan Pruebas Aceptación | 24h | 2021-12-21 | 2021-12-24 | 17 | 0d |  | T1; T2 | 48h | 960 |
| 16 | Elaborar Plan Pruebas Sistema | 3d? | 2021-11-16 | 2021-11-19 | 5FF, 4SS+2% | 28.12d |  | T1; T2 | 48h | 960 |
| 17 | Ejecutar Plan Pruebas Sistema | 1.88d? | 2021-12-17 | 2021-12-21 | 21 | 0d |  | T1; T2 | 30h | 600 |
| 18 | Elaborar Plan Pruebas Integración | 4.5d? | 2021-11-23 | 2021-11-30 | 6FF | 21.12d |  | T1; T2 | 72h | 1,440 |
| 19 | Ejecutar Plan Pruebas Integración | 2.5d? | 2021-12-10 | 2021-12-14 | 13 | 0d |  | T1; T2 | 40h | 800 |
| 20 | Test de Usabilidad | 8h | 2021-12-17 | 2021-12-20 | 21 | 3.62d | 0.88d | T1; T2 | 16h | 320 |
| 21 | Preparar Paquete de Instalación | 24h | 2021-12-14 | 2021-12-17 | 19 | 0d |  | DS1; DS2 | 48h | 1,080 |
| 22 | Elaborar Doc. Usuario v3 | 3d? | 2021-12-21 | 2021-12-24 | 20, 17 | 2.75d |  | DS1 | 24h | 600 |
| 23 | Elaborar Plan Instalación & Formación | 0.75d? | 2021-12-24 | 2021-12-27 | 15 | 0d |  | DS1; A2; D2; T1 | 24h | 600 |
| 24 | Instalación en Cliente | 1.5d? | 2021-12-27 | 2021-12-28 | 23 | 0.5d |  | DS3; DS4; DS5; DS1; DS2 | 60h | 1,080 |
| 25 | Formación | 16h | 2021-12-27 | 2021-12-29 | 23 | 0d |  | A2; D2; T1; DS1 | 64h | 1,600 |
